# ParteniElena

Schedule from MS Project, 2024-01-03 to 2024-07-31, costs in €, A marks actual dates.
UGAL

## Calendars

- Standard: Mon-Fri 08:00-12:00, 13:00-17:00; Sat-Sun off.

## Resources

| Resource | Group | Rate | Cost per use |
| --- | --- | --- | --- |
| Marco Rossi | Programator | 17 |  |
| Gheorghe Stefan | Programator senior | 17 |  |
| Sofia Bianchi | Programator | 17 |  |
| Giulia Ferrari | Tester | 17 |  |
| Alessandro Moretti | Infrastructura IT | 17 |  |
| Carter Jack | Infrastructura IT | 19 |  |
| Mike Ross | Date si analiza | 19 |  |
| Alexandru Stan | Programator | 12 |  |
| Ioana Petrescu | Programator senior | 17 |  |
| Vasile Georgescu | Arhitectura | 12 |  |
| Ana Mihai | Infrastructura IT | 12 |  |
| Gabriel Marinescu | Date si analiza | 12 |  |
| Cristina Popa | Programator | 12 |  |
| Elena Parteni | Project Manager | 12 |  |
| Buget achizitii | Buget |  | 24411 |
| Bilet avion RO-IT | Buget |  | 408 |
| Bilet avion UK-RO | Buget |  | 144 |
| Transport | Buget |  | 73 |
| Hotel | Buget |  | 3049 |
| Diurna | Buget |  | 250 |

## Schedule

| ID | WBS | Task | Duration | Start | Finish | Predecessors | Complete | Remaining | Total slack | Free slack | Constraint | Resources | Work | Actual work | Cost | Actual cost |
| --- | --- | --- | --- | --- | --- | --- | --- | --- | --- | --- | --- | --- | --- | --- | --- | --- |
| 1 | 1 | **Activitati proiect** | 151d | 2024-01-03 A | 2024-07-31 |  |  | 150.84d | 0d |  |  |  | 6032h | 3.04h | 101,312 | 36.48 |
| 2 | 1.1 | **Activitati Manager de Proiect** | 25d | 2024-01-03 A | 2024-02-06 |  | 2% | 24.52d | 1d | 0d |  |  | 160h | 3.04h | 1,920 | 36.48 |
| 3 | 1.1.1 | **Discutia cu beneficiarul** | 9d | 2024-01-03 A | 2024-01-15 |  | 4% | 8.62d | 5d | 0d |  |  | 72h | 3.04h | 864 | 36.48 |
| 4 | 1.1.1.1 | Intalnirea de lansare a proiectului | 1d | 2024-01-03 A | 2024-01-03 |  | 38% | 0.62d | 4d | 0d | start no earlier than 2024-01-02 | Elena Parteni | 8h | 3.04h | 96 | 36.48 |
| 5 | 1.1.1.2 | Determinare obiective proiect | 1d | 2024-01-04 | 2024-01-04 | 4 |  |  | 4d | 0d | finish no earlier than 2024-01-04 | Elena Parteni | 8h |  | 96 |  |
| 6 | 1.1.1.3 | Colectarea cerintelor | 2d | 2024-01-05 | 2024-01-08 | 5 |  |  | 4d | 0d |  | Elena Parteni | 16h |  | 192 |  |
| 7 | 1.1.1.4 | Planificarea managementului riscurilor | 2d | 2024-01-09 | 2024-01-10 | 6 |  |  | 4d | 0d | finish no earlier than 2024-01-09 | Elena Parteni | 16h |  | 192 |  |
| 8 | 1.1.1.5 | Prezentarea ofertei de lucru | 1d | 2024-01-11 | 2024-01-11 | 7 |  |  | 4d | 0d | finish no earlier than 2024-01-10 | Elena Parteni | 8h |  | 96 |  |
| 9 | 1.1.1.6 | Negocierea contractului | 1d | 2024-01-12 | 2024-01-12 | 8 |  |  | 5d | 0d | finish no earlier than 2024-01-11 | Elena Parteni | 8h |  | 96 |  |
| 10 | 1.1.1.7 | Semnarea contractului | 1d | 2024-01-15 | 2024-01-15 | 9 |  |  | 5d |  | finish no earlier than 2024-01-12 | Elena Parteni | 8h |  | 96 |  |
| 11 | 1.1.2 | **Predarea proiectului** | 16d | 2024-01-16 | 2024-02-06 | 3 |  |  | 1d |  |  |  | 88h |  | 1,056 |  |
| 12 | 1.1.2.1 | Intalnirea cu clientul | 1d | 2024-01-16 | 2024-01-16 |  |  |  | 5d | 2d | finish no earlier than 2024-01-15 | Elena Parteni | 8h |  | 96 |  |
| 13 | 1.1.2.2 | Testarea finala | 2d | 2024-01-19 | 2024-01-22 | 12 |  |  | 4d | 3d | finish no earlier than 2024-01-22 | Elena Parteni | 16h |  | 192 |  |
| 14 | 1.1.2.3 | Documentatia finala | 2d | 2024-01-26 | 2024-01-29 | 13 |  |  | 1d | 0d | finish no earlier than 2024-01-29 | Elena Parteni | 16h |  | 192 |  |
| 15 | 1.1.2.4 | Explicare manual de utilizare | 2d | 2024-01-30 | 2024-01-31 | 14 |  |  | 1d | 0d |  | Elena Parteni | 16h |  | 192 |  |
| 16 | 1.1.2.5 | Training-ul clientului | 3d | 2024-02-01 | 2024-02-05 | 15 |  |  | 1d | 0d |  | Elena Parteni | 24h |  | 288 |  |
| 17 | 1.1.2.6 | Predarea oficiala | 1d | 2024-02-06 | 2024-02-06 | 16 |  |  | 1d |  |  | Elena Parteni | 8h |  | 96 |  |
| 18 | 1.2 | **Activitati Programatori** | 29d | 2024-02-07 | 2024-03-18 | 2 |  |  | 1d | 0d |  |  | 552h |  | 8,048 |  |
| 19 | 1.2.1 | **Instruire personal** | 21d | 2024-02-07 | 2024-03-06 |  |  |  | 1d | 0d |  |  | 320h |  | 4,544 |  |
| 20 | 1.2.1.1 | Parcurgere documentatie pe arhitectura | 4d | 2024-02-07 | 2024-02-12 |  |  |  | 1d | 0d |  | Vasile Georgescu | 32h |  | 384 |  |
| 21 | 1.2.1.2 | Training pe arhitectura | 2d | 2024-02-13 | 2024-02-14 | 20 |  |  | 1d | 0d |  | Vasile Georgescu | 16h |  | 192 |  |
| 22 | 1.2.1.3 | Parcurgere documentatie pe frontend | 2d | 2024-02-15 | 2024-02-19 | 21 |  |  | 1d | 0d | finish no earlier than 2024-02-15 | Alexandru Stan; Marco Rossi | 16h |  | 232 |  |
| 23 | 1.2.1.4 | Training pe frontend | 1d | 2024-02-20 | 2024-02-20 | 22 |  |  | 1d | 0d |  | Alexandru Stan; Marco Rossi | 16h |  | 232 |  |
| 24 | 1.2.1.5 | Parcurgere documentatie pe backend | 2d | 2024-02-21 | 2024-02-22 | 23 |  |  | 1d | 0d |  | Cristina Popa; Sofia Bianchi | 32h |  | 464 |  |
| 25 | 1.2.1.6 | Training pe backend | 1d | 2024-02-23 | 2024-02-23 | 24 |  |  | 1d | 0d |  | Cristina Popa; Sofia Bianchi | 16h |  | 232 |  |
| 26 | 1.2.1.7 | Parcurgere documentatie baze de date | 1d | 2024-02-26 | 2024-02-26 | 25 |  |  | 1d | 0d |  | Gabriel Marinescu; Mike Ross | 16h |  | 248 |  |
| 27 | 1.2.1.8 | Training baze de date | 1d | 2024-02-27 | 2024-02-27 | 26 |  |  | 1d | 0d |  | Gabriel Marinescu; Mike Ross | 16h |  | 248 |  |
| 28 | 1.2.1.9 | Rezolvare de exercitii tip teste pentru training-urile efectuate | 3d | 2024-02-28 | 2024-03-01 | 27 |  |  | 1d | 0d |  | Alexandru Stan; Cristina Popa; Gabriel Marinescu; Marco Rossi; Mike Ross; Sofia Bianchi; Vasile Georgescu; Giulia Ferrari | 136h |  | 2,024 |  |
| 29 | 1.2.1.10 | Revizuirea si feedback-ul pe training-uri | 3d | 2024-03-04 | 2024-03-06 | 28 |  |  | 1d |  |  | Elena Parteni | 24h |  | 288 |  |

| ID | WBS | Task | Duration | Start | Finish | Predecessors | Total slack | Free slack | Resources | Work | Cost |
| --- | --- | --- | --- | --- | --- | --- | --- | --- | --- | --- | --- |
| 30 | 1.2.2 | **Predarea proiectului managerului** | 8d | 2024-03-07 | 2024-03-18 | 19 | 1d |  |  | 232h | 3,504 |
| 31 | 1.2.2.1 | Prezentarea proiectului managerului | 1d | 2024-03-07 | 2024-03-07 |  | 1d | 0d | Ioana Petrescu | 8h | 136 |
| 32 | 1.2.2.2 | Creare manual de utilizare | 2d | 2024-03-08 | 2024-03-11 | 31 | 1d | 0d | Vasile Georgescu; Marco Rossi; Sofia Bianchi; Giulia Ferrari | 64h | 1,008 |
| 33 | 1.2.2.3 | Discutii cu managerul in urma prezentarii proiectului | 2d | 2024-03-12 | 2024-03-13 | 32 | 1d | 0d | Giulia Ferrari; Marco Rossi; Cristina Popa; Alessandro Moretti; Vasile Georgescu | 80h | 1,200 |
| 34 | 1.2.2.4 | Retusuri finale ale proiectului | 3d | 2024-03-14 | 2024-03-18 | 33 | 1d |  | Ana Mihai; Giulia Ferrari; Alexandru Stan; Sofia Bianchi | 80h | 1,160 |
| 35 | 1.3 | **Task-uri de Dezvoltare** | 97d | 2024-03-19 | 2024-07-31 | 18 | 0d |  |  | 2152h | 32,912 |
| 36 | 1.3.1 | **Proiectarea arhitecturii aplicatiei** | 16d | 2024-03-19 | 2024-04-09 |  | 1d | 0d |  | 112h | 1,344 |
| 37 | 1.3.1.1 | Analiza cerintelor functioanele si non-functionale | 2d | 2024-03-19 | 2024-03-20 |  | 1d | 0d | Vasile Georgescu | 16h | 192 |
| 38 | 1.3.1.2 | Definirea structurii modulare a aplicatiei | 2d | 2024-03-21 | 2024-03-22 | 37 | 1d |  | Vasile Georgescu | 16h | 192 |
| 39 | 1.3.1.3 | Identificarea si descrierea componentelor principale | 2d | 2024-03-27 | 2024-03-28 | 38 | 1d | 0d | Vasile Georgescu | 16h | 192 |
| 40 | 1.3.1.4 | Definirea interfetelor intre componente | 2d | 2024-03-29 | 2024-04-01 | 39 | 1d | 0d | Vasile Georgescu | 16h | 192 |
| 41 | 1.3.1.5 | Stabilirea diagramelor de secventa si de colaborare | 2d | 2024-04-02 | 2024-04-03 | 40 | 1d | 0d | Vasile Georgescu | 16h | 192 |
| 42 | 1.3.1.6 | Revizuirea si validarea arhitecturii propuse | 2d | 2024-04-04 | 2024-04-05 | 41 | 1d | 0d | Vasile Georgescu | 16h | 192 |
| 43 | 1.3.1.7 | Documentarea arhitecturii aplicatiei | 2d | 2024-04-08 | 2024-04-09 | 42 | 1d |  | Vasile Georgescu | 16h | 192 |
| 44 | 1.3.2 | **Dezvoltare Frontend-Etapa 1** | 10d | 2024-04-10 | 2024-04-23 | 36 | 2d | 0d |  | 200h | 3,120 |
| 45 | 1.3.2.1 | Creare layout principal | 4d | 2024-04-10 | 2024-04-15 |  | 2d | 0d | Alexandru Stan; Gheorghe Stefan; Marco Rossi | 96h | 1,472 |
| 46 | 1.3.2.2 | Implementare componente UI | 4d | 2024-04-16 | 2024-04-19 | 45 | 2d | 0d | Alexandru Stan; Gheorghe Stefan; Marco Rossi | 88h | 1,376 |
| 47 | 1.3.2.3 | Testare si feedback UI | 2d | 2024-04-22 | 2024-04-23 | 46 | 2d |  | Gheorghe Stefan | 16h | 272 |
| 48 | 1.3.3 | **Dezoltare Backend-Etapa 1** | 11d | 2024-04-10 | 2024-04-24 | 36 | 1d | 0d |  | 216h | 3,352 |
| 49 | 1.3.3.1 | Creare API-uri initiale | 4d | 2024-04-10 | 2024-04-15 | 36 | 2d | 0d | Cristina Popa; Sofia Bianchi; Ioana Petrescu | 96h | 1,472 |
| 50 | 1.3.3.2 | Implementare logica de business | 4d | 2024-04-16 | 2024-04-19 | 49 | 2d | 0d | Cristina Popa; Sofia Bianchi; Ioana Petrescu | 80h | 1,280 |
| 51 | 1.3.3.3 | Testare si feedback backend | 3d | 2024-04-22 | 2024-04-24 | 50 | 1d |  | Cristina Popa; Sofia Bianchi; Ioana Petrescu | 40h | 600 |
| 52 | 1.3.4 | **Testare si Integrare Intermediara** | 4d | 2024-04-25 | 2024-04-30 | 48, 44 | 1d |  |  | 80h | 1,200 |
| 53 | 1.3.4.1 | Testare si integrare frontend-backend | 3d | 2024-04-25 | 2024-04-29 |  | 2d |  | Gheorghe Stefan; Ioana Petrescu | 48h | 816 |
| 54 | 1.3.4.2 | Rezolvarea bug-urilor initiale | 4d | 2024-04-25 | 2024-04-30 | 44, 48 | 1d |  | Vasile Georgescu | 32h | 384 |

| ID | WBS | Task | Duration | Start | Finish | Predecessors | Total slack | Free slack | Resources | Work | Cost |
| --- | --- | --- | --- | --- | --- | --- | --- | --- | --- | --- | --- |
| 55 | 1.3.5 | **Dezvoltare Frontend-Etapa 2** | 18d | 2024-05-02 | 2024-05-27 | 52 | 9d | 8d |  | 184h | 2,888 |
| 56 | 1.3.5.1 | Extinderea componentelor UI | 6d | 2024-05-02 | 2024-05-09 |  | 9d | 0d | Alexandru Stan; Gheorghe Stefan; Marco Rossi | 72h | 1,104 |
| 57 | 1.3.5.2 | Optimizarea layout-ului | 3d | 2024-05-10 | 2024-05-14 | 56 | 11d | 0d | Alexandru Stan; Gheorghe Stefan; Marco Rossi | 72h | 1,104 |
| 58 | 1.3.5.3 | Implementarea functionalitatilor din HTML si CSS | 3d | 2024-05-15 | 2024-05-17 | 57 | 14d | 5d | Gheorghe Stefan; Marco Rossi | 32h | 544 |
| 59 | 1.3.5.4 | Testare si optimizare | 1d | 2024-05-27 | 2024-05-27 | 58 | 9d |  | Marco Rossi | 8h | 136 |
| 60 | 1.3.6 | **Dezvoltare Backend-Etapa 2** | 26d | 2024-05-02 | 2024-06-06 | 52 | 1d | 0d |  | 424h | 6,528 |
| 61 | 1.3.6.1 | Implementare functii avansate | 5d | 2024-05-02 | 2024-05-09 |  | 1d | 0d | Cristina Popa; Sofia Bianchi; Ioana Petrescu | 56h | 872 |
| 62 | 1.3.6.2 | Implementare functionalitati in JavaScript | 3d | 2024-05-10 | 2024-05-14 | 61 | 1d | 0d | Cristina Popa; Sofia Bianchi; Ioana Petrescu | 72h | 1,104 |
| 63 | 1.3.6.3 | Dezvoltarea autentificarii si autorizarii utilizatorilor | 3d | 2024-05-15 | 2024-05-17 | 62 | 1d | 0d | Cristina Popa; Sofia Bianchi; Ioana Petrescu | 72h | 1,104 |
| 64 | 1.3.6.4 | Implementarea sistemului de cautare si filtrare a produselor | 3d | 2024-05-20 | 2024-05-22 | 63 | 1d | 0d | Cristina Popa; Sofia Bianchi; Ioana Petrescu | 72h | 1,104 |
| 65 | 1.3.6.5 | Gestionarea cosului de cumparaturi si a comenzilor | 5d | 2024-05-23 | 2024-06-03 | 64 | 1d | 0d | Cristina Popa; Sofia Bianchi; Ioana Petrescu | 80h | 1,240 |
| 66 | 1.3.6.6 | Implementarea platilor si integrarea cu procesatorii de plati | 1d | 2024-06-04 | 2024-06-04 | 65 | 1d | 0d | Cristina Popa; Sofia Bianchi; Ioana Petrescu | 24h | 368 |
| 67 | 1.3.6.7 | Optimizarea si testarea perfomantelor backend | 2d | 2024-06-05 | 2024-06-06 | 66 | 1d |  | Ioana Petrescu; Cristina Popa; Sofia Bianchi | 48h | 736 |
| 68 | 1.3.7 | **Dezvoltare Baze de Date** | 28d | 2024-04-15 | 2024-05-22 | 36 | 12d | 11d |  | 320h | 5,072 |
| 69 | 1.3.7.1 | Crearea schemei bazei de date | 5d | 2024-04-15 | 2024-04-19 |  | 14d | 0d | Mike Ross | 40h | 760 |
| 70 | 1.3.7.2 | Proiectarea la nivel conceptual | 4d | 2024-04-22 | 2024-04-25 | 69 | 15d | 0d | Gabriel Marinescu; Mike Ross | 64h | 992 |
| 71 | 1.3.7.3 | Proiectarea la nivel logic | 4d | 2024-04-26 | 2024-05-07 | 70 | 11d | 0d | Gabriel Marinescu; Mike Ross | 48h | 688 |
| 72 | 1.3.7.4 | Implementarea bazei de date | 2d | 2024-05-08 | 2024-05-09 | 71 | 11d | 0d | Gabriel Marinescu; Mike Ross | 32h | 496 |
| 73 | 1.3.7.5 | Crearea tabelelor si legaturilor intre ele | 4d | 2024-05-10 | 2024-05-15 | 72 | 12d | 0d | Gabriel Marinescu; Mike Ross | 56h | 896 |
| 74 | 1.3.7.6 | Aplicarea restrictiilor intre tabele | 2d | 2024-05-16 | 2024-05-17 | 73 | 12d | 0d | Gabriel Marinescu; Mike Ross | 32h | 496 |
| 75 | 1.3.7.7 | Testarea performantelor bazei de date | 3d | 2024-05-20 | 2024-05-22 | 74 | 12d |  | Gabriel Marinescu; Mike Ross | 48h | 744 |
| 76 | 1.3.8 | **Integrarea Componentelor Proiectului** | 9d | 2024-06-07 | 2024-06-19 | 68, 60, 55 | 1d | 0d |  | 184h | 2,688 |
| 77 | 1.3.8.1 | Conexiunea site-ului web cu baza de date | 2d | 2024-06-07 | 2024-06-10 |  | 1d | 0d | Gabriel Marinescu | 16h | 192 |
| 78 | 1.3.8.2 | Restrictii la introducerea datelor bazei de date | 1d | 2024-06-11 | 2024-06-11 | 77 | 1d | 0d | Gabriel Marinescu | 8h | 96 |
| 79 | 1.3.8.3 | Integrarea functionalitatilor din frontend | 2d | 2024-06-12 | 2024-06-13 | 78 | 1d | 0d | Marco Rossi; Gheorghe Stefan; Alexandru Stan | 48h | 736 |
| 80 | 1.3.8.4 | Integrarea functionalitatilor avansate din backend | 2d | 2024-06-14 | 2024-06-17 | 79 | 1d | 0d | Cristina Popa; Sofia Bianchi | 32h | 464 |
| 81 | 1.3.8.5 | Testare si feedback integrare | 2d | 2024-06-18 | 2024-06-19 | 80 | 1d |  | Cristina Popa; Gheorghe Stefan; Alexandru Stan; Marco Rossi; Sofia Bianchi | 80h | 1,200 |

| ID | WBS | Task | Duration | Start | Finish | Predecessors | Total slack | Free slack | Resources | Work | Cost |
| --- | --- | --- | --- | --- | --- | --- | --- | --- | --- | --- | --- |
| 82 | 1.3.9 | **Dezvoltare Finala a Proiectului** | 20d | 2024-06-20 | 2024-07-17 | 55, 60, 68, 76 | 0d |  |  | 312h | 4,680 |
| 83 | 1.3.9.1 | Impelementare feedback UI final | 4d | 2024-06-20 | 2024-06-25 |  | 1d | 0d | Cristina Popa; Sofia Bianchi | 48h | 696 |
| 84 | 1.3.9.2 | Testare finala UI | 3d | 2024-06-26 | 2024-06-28 | 83 | 1d | 0d | Ioana Petrescu; Cristina Popa; Sofia Bianchi | 72h | 1,104 |
| 85 | 1.3.9.3 | Implementare feedback backend final | 3d | 2024-07-01 | 2024-07-03 | 84 | 1d | 0d | Alexandru Stan; Marco Rossi | 48h | 696 |
| 86 | 1.3.9.4 | Testare finala backend | 4d | 2024-07-04 | 2024-07-09 | 85 | 0d |  | Cristina Popa; Sofia Bianchi | 48h | 696 |
| 87 | 1.3.9.5 | Implementarea finala a bazei de date | 3d | 2024-07-10 | 2024-07-12 | 86 | 0d |  | Gabriel Marinescu; Mike Ross | 48h | 744 |
| 88 | 1.3.9.6 | Testarea finala a bazei de date | 3d | 2024-07-15 | 2024-07-17 | 87 | 0d |  | Gabriel Marinescu; Mike Ross | 48h | 744 |
| 89 | 1.3.10 | **Testarea si Integrarea Finala a Proiectului** | 10d | 2024-07-18 | 2024-07-31 | 82 | 0d |  |  | 120h | 2,040 |
| 90 | 1.3.10.1 | Integrarea finala a componentelor | 5d | 2024-07-18 | 2024-07-24 |  | 0d |  | Gheorghe Stefan | 40h | 680 |
| 91 | 1.3.10.2 | Testarea si integrarea finala | 3d | 2024-07-25 | 2024-07-29 | 90 | 0d |  | Gheorghe Stefan; Ioana Petrescu | 48h | 816 |
| 92 | 1.3.10.3 | Remedierea erorilor de integrare finala | 2d | 2024-07-30 | 2024-07-31 | 91 | 0d |  | Gheorghe Stefan; Ioana Petrescu | 32h | 544 |
| 93 | 1.4 | **Activitati Angajati Functii Diferite** | 14d | 2024-01-16 | 2024-02-02 | 3 | 126d |  |  | 944h | 14,536 |
| 94 | 1.4.1 | **Analiza Problemei** | 14d | 2024-01-16 | 2024-02-02 |  | 126d |  |  | 944h | 14,536 |
| 95 | 1.4.1.1 | Identificare solutii posibile | 4d | 2024-01-16 | 2024-01-19 |  | 126d | 0d | Alessandro Moretti; Alexandru Stan; Ana Mihai; Carter Jack; Cristina Popa; Gabriel Marinescu; Marco Rossi; Mike Ross; Sofia Bianchi; Vasile Georgescu; Gheorghe Stefan; Giulia Ferrari | 368h | 5,584 |
| 96 | 1.4.1.2 | Selectare solutii optime | 7d | 2024-01-22 | 2024-01-30 | 95 | 126d | 0d | Alessandro Moretti; Alexandru Stan; Ana Mihai; Carter Jack; Cristina Popa; Gabriel Marinescu; Marco Rossi; Mike Ross; Sofia Bianchi; Vasile Georgescu; Gheorghe Stefan; Giulia Ferrari; Ioana Petrescu | 360h | 5,616 |
| 97 | 1.4.1.3 | Tehnoredactare documente studiate | 3d | 2024-01-31 | 2024-02-02 | 96 | 126d |  | Alessandro Moretti; Alexandru Stan; Ana Mihai; Carter Jack; Cristina Popa; Gabriel Marinescu; Marco Rossi; Mike Ross; Sofia Bianchi; Vasile Georgescu; Gheorghe Stefan; Giulia Ferrari; Ioana Petrescu | 216h | 3,336 |
| 98 | 1.5 | **Activitati de Date si Analiza** | 31d | 2024-03-07 | 2024-04-18 | 19 | 73d |  |  | 416h | 6,208 |
| 99 | 1.5.1 | **Analiza datelor clientilor** | 8d | 2024-03-07 | 2024-03-18 |  | 73d | 0d |  | 128h | 1,984 |
| 100 | 1.5.1.1 | Colectarea datelor de la clienti | 2d | 2024-03-07 | 2024-03-08 |  | 73d | 0d | Gabriel Marinescu; Mike Ross | 32h | 496 |
| 101 | 1.5.1.2 | Curatarea si pregatirea datelor | 2d | 2024-03-11 | 2024-03-12 | 100 | 74d | 0d | Gabriel Marinescu; Mike Ross | 32h | 496 |
| 102 | 1.5.1.3 | Analiza comportamentului de cumparare | 2d | 2024-03-13 | 2024-03-14 | 101 | 75d | 0d | Gabriel Marinescu; Mike Ross | 32h | 496 |
| 103 | 1.5.1.4 | Generarea rapoartelor de analiza | 2d | 2024-03-15 | 2024-03-18 | 102 | 75d |  | Gabriel Marinescu; Mike Ross | 32h | 496 |
| 104 | 1.5.2 | **Analiza performantei site-ului** | 7d | 2024-03-19 | 2024-03-27 | 99 | 75d | 0d |  | 112h | 1,736 |
| 105 | 1.5.2.1 | Configurarea instrumentelor de monitorizare | 1d | 2024-03-19 | 2024-03-19 |  | 75d | 0d | Gabriel Marinescu; Mike Ross | 16h | 248 |
| 106 | 1.5.2.2 | Colectarea datelor de performanta | 2d | 2024-03-20 | 2024-03-21 | 105 | 75d | 0d | Gabriel Marinescu; Mike Ross | 32h | 496 |
| 107 | 1.5.2.3 | Analiza timpului de incarcare a paginilor | 2d | 2024-03-22 | 2024-03-25 | 106 | 75d | 0d | Gabriel Marinescu; Mike Ross | 32h | 496 |
| 108 | 1.5.2.4 | Generarea rapoartelor de performanta | 2d | 2024-03-26 | 2024-03-27 | 107 | 75d |  | Gabriel Marinescu; Mike Ross | 32h | 496 |

| ID | WBS | Task | Duration | Start | Finish | Predecessors | Total slack | Free slack | Resources | Work | Cost |
| --- | --- | --- | --- | --- | --- | --- | --- | --- | --- | --- | --- |
| 109 | 1.5.3 | **Optimizarea bazei de date** | 8d | 2024-03-28 | 2024-04-08 | 104 | 74d | 0d |  | 112h | 1,720 |
| 110 | 1.5.3.1 | Revizuirea schemei bazei de date | 2d | 2024-03-28 | 2024-03-29 |  | 75d | 0d | Gabriel Marinescu; Mike Ross | 24h | 344 |
| 111 | 1.5.3.2 | Indexarea tabelelor pentru performanta | 3d | 2024-04-01 | 2024-04-03 | 110 | 74d | 0d | Gabriel Marinescu; Mike Ross | 32h | 496 |
| 112 | 1.5.3.3 | Implementarea de proceduri stocate | 2d | 2024-04-04 | 2024-04-05 | 111 | 74d | 0d | Gabriel Marinescu; Mike Ross | 32h | 496 |
| 113 | 1.5.3.4 | Testarea optimizarilor | 1d | 2024-04-08 | 2024-04-08 | 112 | 74d |  | Gabriel Marinescu; Mike Ross; Giulia Ferrari | 24h | 384 |
| 114 | 1.5.4 | **Analiza vanzarilor si tendintelor** | 8d | 2024-04-09 | 2024-04-18 | 109 | 74d |  |  | 64h | 768 |
| 115 | 1.5.4.1 | Colectarea datelor de vanzari | 2d | 2024-04-09 | 2024-04-10 |  | 74d | 0d | Gabriel Marinescu | 16h | 192 |
| 116 | 1.5.4.2 | Analiza tendintelor de vanzari | 2d | 2024-04-11 | 2024-04-12 | 115 | 74d | 0d | Gabriel Marinescu | 16h | 192 |
| 117 | 1.5.4.3 | Segmentarea pietei | 2d | 2024-04-15 | 2024-04-16 | 116 | 74d | 0d | Gabriel Marinescu | 16h | 192 |
| 118 | 1.5.4.4 | Generarea rapoartelor de vanzari | 2d | 2024-04-17 | 2024-04-18 | 117 | 74d |  | Gabriel Marinescu | 16h | 192 |
| 119 | 1.6 | **Activitati pentru Testare** | 36d | 2024-04-24 | 2024-06-12 | 44 | 35d |  |  | 240h | 4,080 |
| 120 | 1.6.1 | **Testare pe unitati** | 10d | 2024-04-24 | 2024-05-07 | 19 | 38d | 0d |  | 64h | 1,088 |
| 121 | 1.6.1.1 | Pregatirea mediului de testare | 1d | 2024-04-24 | 2024-04-24 |  | 38d | 1d | Giulia Ferrari | 8h | 136 |
| 122 | 1.6.1.2 | Crearea cazurilor de testare | 2d | 2024-04-26 | 2024-04-29 | 121 | 37d | 0d | Giulia Ferrari | 16h | 272 |
| 123 | 1.6.1.3 | Executarea testelor unitare | 3d | 2024-04-30 | 2024-05-03 | 122 | 38d | 0d | Giulia Ferrari | 24h | 408 |
| 124 | 1.6.1.4 | Documentarea rezultatelor testarii | 2d | 2024-05-06 | 2024-05-07 | 123 | 38d |  | Giulia Ferrari | 16h | 272 |
| 125 | 1.6.2 | **Testare de integrare** | 12d | 2024-05-08 | 2024-05-23 | 120 | 34d | 0d |  | 64h | 1,088 |
| 126 | 1.6.2.1 | Planificarea testelor de integrare | 1d | 2024-05-08 | 2024-05-08 |  | 38d | 0d | Giulia Ferrari | 8h | 136 |
| 127 | 1.6.2.2 | Crearea cazurilor de testare pentru integrare | 2d | 2024-05-09 | 2024-05-10 | 126 | 38d | 4d | Giulia Ferrari | 16h | 272 |
| 128 | 1.6.2.3 | Executarea testelor de integrare | 3d | 2024-05-17 | 2024-05-21 | 127 | 34d | 0d | Giulia Ferrari | 24h | 408 |
| 129 | 1.6.2.4 | Raportarea si remedierea defectelor | 2d | 2024-05-22 | 2024-05-23 | 128 | 34d |  | Giulia Ferrari | 16h | 272 |
| 130 | 1.6.3 | **Testare de acceptare a utilizatorului(UAT)** | 8d | 2024-05-24 | 2024-06-04 | 125 | 34d | 0d |  | 64h | 1,088 |
| 131 | 1.6.3.1 | Definirea criteriilor de acceptare | 1d | 2024-05-24 | 2024-05-24 |  | 34d | 0d | Giulia Ferrari | 8h | 136 |
| 132 | 1.6.3.2 | Pregatirea scenariilor de testare | 2d | 2024-05-27 | 2024-05-28 | 131 | 34d | 0d | Giulia Ferrari | 16h | 272 |
| 133 | 1.6.3.3 | Executarea testelor UAT | 3d | 2024-05-29 | 2024-05-31 | 132 | 34d | 0d | Giulia Ferrari | 24h | 408 |
| 134 | 1.6.3.4 | Feedback si ajustari finale | 2d | 2024-06-03 | 2024-06-04 | 133 | 34d |  | Giulia Ferrari | 16h | 272 |

| ID | WBS | Task | Duration | Start | Finish | Predecessors | Total slack | Free slack | Resources | Work | Cost |
| --- | --- | --- | --- | --- | --- | --- | --- | --- | --- | --- | --- |
| 135 | 1.6.4 | **Testare de securitate si performanta** | 6d | 2024-06-05 | 2024-06-12 | 130 | 34d |  |  | 48h | 816 |
| 136 | 1.6.4.1 | Evaluarea riscurilor de securitate | 1d | 2024-06-05 | 2024-06-05 |  | 34d | 0d | Giulia Ferrari | 8h | 136 |
| 137 | 1.6.4.2 | Testarea vulnerabilitatilor de securitate | 2d | 2024-06-06 | 2024-06-07 | 136 | 34d | 0d | Giulia Ferrari | 16h | 272 |
| 138 | 1.6.4.3 | Testarea sarcinilor de performanta | 2d | 2024-06-10 | 2024-06-11 | 137 | 34d | 0d | Giulia Ferrari | 16h | 272 |
| 139 | 1.6.4.4 | Optimizarea si documentarea finala | 1d | 2024-06-12 | 2024-06-12 | 138 | 35d |  | Giulia Ferrari | 8h | 136 |
| 140 | 1.7 | **Activitati pe Infrastructura IT** | 56d | 2024-02-07 | 2024-04-24 | 2 | 70d |  |  | 808h | 13,320 |
| 141 | 1.7.1 | **Configurarea serverului** | 9d | 2024-02-07 | 2024-02-19 |  | 71d | 0d |  | 208h | 3,320 |
| 142 | 1.7.1.1 | Selectarea specificatiilor serverului | 3d | 2024-02-07 | 2024-02-09 |  | 71d | 0d | Alessandro Moretti; Ana Mihai; Carter Jack | 72h | 1,152 |
| 143 | 1.7.1.2 | Instalarea sistemului de operare | 3d | 2024-02-12 | 2024-02-14 | 142 | 72d | 0d | Alessandro Moretti; Ana Mihai; Carter Jack | 64h | 1,016 |
| 144 | 1.7.1.3 | Configurarea setarilor de retea | 2d | 2024-02-15 | 2024-02-16 | 143 | 73d | 0d | Alessandro Moretti; Ana Mihai; Carter Jack | 48h | 768 |
| 145 | 1.7.1.4 | Testarea si validarea configuratiei | 1d | 2024-02-19 | 2024-02-19 | 144 | 73d |  | Alessandro Moretti; Ana Mihai; Carter Jack | 24h | 384 |
| 146 | 1.7.2 | **Setarea mediilor de dezvoltare si testare** | 13d | 2024-02-20 | 2024-03-07 | 141 | 70d | 0d |  | 224h | 3,536 |
| 147 | 1.7.2.1 | Instalarea instrumentelor de dezvoltare | 3d | 2024-02-20 | 2024-02-22 |  | 73d | 0d | Alessandro Moretti; Ana Mihai; Carter Jack | 72h | 1,152 |
| 148 | 1.7.2.2 | Configurarea mediilor de devoltare | 3d | 2024-02-23 | 2024-02-27 | 147 | 73d | 0d | Alessandro Moretti; Ana Mihai; Carter Jack | 56h | 848 |
| 149 | 1.7.2.3 | Configurarea mediului de testare | 2d | 2024-02-28 | 2024-03-04 | 148 | 70d | 0d | Alessandro Moretti; Ana Mihai; Carter Jack | 24h | 384 |
| 150 | 1.7.2.4 | Testarea mediilor setate | 3d | 2024-03-05 | 2024-03-07 | 149 | 70d |  | Alessandro Moretti; Ana Mihai; Carter Jack | 72h | 1,152 |
| 151 | 1.7.3 | **Implementarea masurilor de securitate** | 19d | 2024-03-08 | 2024-04-03 | 146 | 69d | 0d |  | 192h | 3,296 |
| 152 | 1.7.3.1 | Analiza cerintelor de securitate | 2d | 2024-03-08 | 2024-03-11 |  | 70d | 0d | Alessandro Moretti; Ana Mihai; Carter Jack | 40h | 632 |
| 153 | 1.7.3.2 | Configurarea firewall-urilor | 7d | 2024-03-12 | 2024-03-20 | 152 | 70d | 0d | Carter Jack | 56h | 1,064 |
| 154 | 1.7.3.3 | Implementarea certificatelor SSL | 4d | 2024-03-21 | 2024-03-26 | 153 | 70d | 0d | Ana Mihai; Carter Jack | 40h | 704 |
| 155 | 1.7.3.4 | Testarea masurilor de securitate | 5d | 2024-03-27 | 2024-04-03 | 154 | 69d |  | Ana Mihai; Carter Jack | 56h | 896 |
| 156 | 1.7.4 | **Backup si recuperare date** | 15d | 2024-04-04 | 2024-04-24 | 151 | 69d |  |  | 184h | 3,168 |
| 157 | 1.7.4.1 | Configurarea strategiilor de backup | 4d | 2024-04-04 | 2024-04-09 |  | 69d | 0d | Alessandro Moretti; Carter Jack | 64h | 1,152 |
| 158 | 1.7.4.2 | Implementarea solutiilor de backup | 2d | 2024-04-10 | 2024-04-11 | 157 | 74d | 0d | Alessandro Moretti; Carter Jack | 32h | 576 |
| 159 | 1.7.4.3 | Testarea restaurarii din backup | 3d | 2024-04-12 | 2024-04-22 | 158 | 70d | 0d | Alessandro Moretti; Ana Mihai; Carter Jack | 40h | 672 |
| 160 | 1.7.4.4 | Documentarea procedurilor de backup | 2d | 2024-04-23 | 2024-04-24 | 159 | 70d |  | Alessandro Moretti; Ana Mihai; Carter Jack | 48h | 768 |

| ID | WBS | Task | Type | Duration | Start | Finish | Predecessors | Total slack | Free slack | Constraint | Resources | Work | Cost |
| --- | --- | --- | --- | --- | --- | --- | --- | --- | --- | --- | --- | --- | --- |
| 161 | 1.8 | **Activitati Programatori Seniori** |  | 44d | 2024-02-07 | 2024-04-08 | 2 | 79d |  |  |  | 432h | 7,344 |
| 162 | 1.8.1 | **Revizuirea codului** |  | 11d | 2024-02-07 | 2024-02-21 |  | 79d | 0d |  |  | 128h | 2,176 |
| 163 | 1.8.1.1 | Stabilirea criteriilor de revizuire |  | 2d | 2024-02-07 | 2024-02-12 |  | 79d | 0d |  | Gheorghe Stefan; Ioana Petrescu | 16h | 272 |
| 164 | 1.8.1.2 | Revizuirea codului frontend |  | 2d | 2024-02-13 | 2024-02-14 | 163 | 79d | 0d |  | Gheorghe Stefan; Ioana Petrescu | 32h | 544 |
| 165 | 1.8.1.3 | Revizuirea codului backend |  | 2d | 2024-02-15 | 2024-02-16 | 164 | 79d | 0d |  | Gheorghe Stefan; Ioana Petrescu | 32h | 544 |
| 166 | 1.8.1.4 | Feedback si remedierea problemelor |  | 3d | 2024-02-19 | 2024-02-21 | 165 | 79d |  |  | Gheorghe Stefan; Ioana Petrescu | 48h | 816 |
| 167 | 1.8.2 | **Mentorat si suport pentru programatori juniori** |  | 18d | 2024-02-22 | 2024-03-18 | 162 | 79d | 0d |  |  | 112h | 1,904 |
| 168 | 1.8.2.1 | Stabilirea sesiunilor de mentorat |  | 1d | 2024-02-22 | 2024-02-22 |  | 79d | 0d |  | Gheorghe Stefan; Ioana Petrescu | 16h | 272 |
| 169 | 1.8.2.2 | Sesiuni de mentorat frontend |  | 5d | 2024-02-23 | 2024-02-29 | 168 | 79d | 0d |  | Ioana Petrescu | 40h | 680 |
| 170 | 1.8.2.3 | Sesiuni de mentorat backend |  | 5d | 2024-03-01 | 2024-03-07 | 169 | 85d | 0d |  | Gheorghe Stefan | 40h | 680 |
| 171 | 1.8.2.4 | Feedback si ajustari |  | 2d | 2024-03-07 | 2024-03-18 | 170 | 82d |  |  | Gheorghe Stefan; Ioana Petrescu | 16h | 272 |
| 172 | 1.8.3 | **Participarea la planificarea arhitecturii** |  | 8d | 2024-03-19 | 2024-03-28 | 167 | 82d | 0d |  |  | 80h | 1,360 |
| 173 | 1.8.3.1 | Analiza cerintelor arhitecturale |  | 1d | 2024-03-19 | 2024-03-19 |  | 82d | 0d |  | Gheorghe Stefan; Ioana Petrescu | 16h | 272 |
| 174 | 1.8.3.2 | Propunerea arhitecturii aplicatiei |  | 2d | 2024-03-20 | 2024-03-21 | 173 | 82d | 0d |  | Gheorghe Stefan | 16h | 272 |
| 175 | 1.8.3.3 | Revizuirea si validarea arhitecturii |  | 3d | 2024-03-22 | 2024-03-26 | 174 | 82d | 0d |  | Gheorghe Stefan; Ioana Petrescu | 32h | 544 |
| 176 | 1.8.3.4 | Documentarea arhitecturii |  | 2d | 2024-03-27 | 2024-03-28 | 175 | 82d |  |  | Ioana Petrescu | 16h | 272 |
| 177 | 1.8.4 | **Suport pentru depanarea problemelor complexe** |  | 7d | 2024-03-29 | 2024-04-08 | 172 | 82d |  |  |  | 112h | 1,904 |
| 178 | 1.8.4.1 | Identificarea problemelor critice |  | 2d | 2024-03-29 | 2024-04-01 |  | 82d | 0d |  | Gheorghe Stefan; Ioana Petrescu | 32h | 544 |
| 179 | 1.8.4.2 | Analiza si depanarea problemelor frontend |  | 2d | 2024-04-02 | 2024-04-03 | 178 | 82d | 0d |  | Gheorghe Stefan; Ioana Petrescu | 32h | 544 |
| 180 | 1.8.4.3 | Analiza si depanarea problemelor backend |  | 2d | 2024-04-04 | 2024-04-05 | 179 | 82d | 0d |  | Gheorghe Stefan; Ioana Petrescu | 32h | 544 |
| 181 | 1.8.4.4 | Testarea solutiilor implementate |  | 1d | 2024-04-08 | 2024-04-08 | 180 | 82d |  |  | Gheorghe Stefan; Ioana Petrescu | 16h | 272 |
| 182 | 1.9 | **Deplasari** |  | 19d | 2024-06-03 | 2024-06-28 |  |  |  |  |  | 328h | 12,944 |
| 183 | 1.9.1 | **Deplasari in interes de munca** |  | 19d | 2024-06-03 | 2024-06-28 |  |  |  |  |  | 328h | 12,944 |
| 184 | 1.9.1.1 | Deplasare UK-Romania | manual | 5d | 2024-07-15 | 2024-07-22 |  |  |  | finish no earlier than 2024-07-19 | Bilet avion RO-IT; Diurna; Elena Parteni; Transport; Hotel; Ioana Petrescu; Ana Mihai | 112h | 5,324 |
| 185 | 1.9.1.2 | Deplasare Romania-Italia | manual | 14d | 2024-06-03 | 2024-06-21 |  |  |  | finish no earlier than 2024-06-14 | Bilet avion UK-RO; Carter Jack; Diurna; Hotel; Mike Ross; Transport | 216h | 7,620 |
